# Проект организация виртуального хостинга сайтов

Schedule from MS Project, 2018-07-09 to 2018-10-26, status date 2018-10-15, costs in ₽, A marks actual dates.

## Calendars

- Стандартный: Mon-Fri 09:00-13:00, 14:00-18:00; Sat-Sun off.

## Resources

| Resource | Rate |
| --- | --- |
| Руководитель проекта Касьянов К.С. | 270 |
| Аналитик | 220 |
| Web-аналитик | 230 |
| Системный администратор | 260 |
| Web-программист | 250 |
| Оборудование | 500000 |
| Командировочные |  |
| Программное обеспечение | 400000 |

## Schedule

| ID | WBS | Task | Type | Duration | Start | Finish | Predecessors | Complete | Remaining | Baseline start | Baseline finish | Baseline duration | Total slack | Resources | Work | Actual work | Cost | Baseline cost | Actual cost |
| --- | --- | --- | --- | --- | --- | --- | --- | --- | --- | --- | --- | --- | --- | --- | --- | --- | --- | --- | --- |
| 1 | 1 | Начало проекта | milestone | 0d | 2018-07-09 A | 2018-07-09 A |  | 100% |  | 2018-07-09 | 2018-07-09 | 0d |  | Руководитель проекта Касьянов К.С. |  |  |  |  |  |
| 2 | 2 | **Анализ рынка хостинга** |  | 6d | 2018-07-09 A | 2018-07-16 A |  | 100% |  | 2018-07-09 | 2018-07-16 | 6d |  |  | 88h | 88h | 20,520 | 20,520 | 20,520 |
| 3 | 2.1 | Определение доли рынка хостинга |  | 3d | 2018-07-09 A | 2018-07-11 A | 1 | 100% |  | 2018-07-09 | 2018-07-11 | 3d |  | Аналитик | 24h | 24h | 5,280 | 5,280 | 5,280 |
| 4 | 2.2 | Определение потребности клиентов к хостингу |  | 2.5d | 2018-07-11 A | 2018-07-13 A | 1FS+2d | 100% |  | 2018-07-11 | 2018-07-13 | 2.5d |  | Web-аналитик; Web-программист | 40h | 40h | 9,600 | 9,600 | 9,600 |
| 5 | 2.3 | Анализ провайдеров Интернет-услуг |  | 1.5d | 2018-07-13 A | 2018-07-16 A | 4 | 100% |  | 2018-07-13 | 2018-07-16 | 1.5d |  | Аналитик; Web-программист | 24h | 24h | 5,640 | 5,640 | 5,640 |
| 6 | 2.4 | Анализ рынка хостинга завершено | milestone | 0d | 2018-07-16 A | 2018-07-16 A | 5 | 100% |  | 2018-07-16 | 2018-07-16 | 0d |  | Руководитель проекта Касьянов К.С. |  |  |  |  |  |
| 7 | 3 | **Разработка программы реализации услуги** |  | 9.5d | 2018-07-17 A | 2018-07-30 A |  | 100% |  | 2018-07-17 | 2018-07-30 | 9.5d |  |  | 128h | 128h | 30,160 | 30,160 | 30,160 |
| 8 | 3.1 | Определениее целей и задач хостинга сайта |  | 1d | 2018-07-17 A | 2018-07-17 A | 6 | 100% |  | 2018-07-17 | 2018-07-17 | 1d |  | Web-аналитик; Аналитик | 16h | 16h | 3,600 | 3,600 | 3,600 |
| 9 | 3.2 | Определение формы реализации хостинга |  | 1d | 2018-07-18 A | 2018-07-18 A | 8 | 100% |  | 2018-07-18 | 2018-07-18 | 1d |  | Web-аналитик; Web-программист | 16h | 16h | 3,840 | 3,840 | 3,840 |
| 10 | 3.3 | Определение пакетов услуги хостинга сайта |  | 2d | 2018-07-19 A | 2018-07-20 A | 9 | 100% |  | 2018-07-19 | 2018-07-20 | 2d |  | Системный администратор; Web-аналитик | 32h | 32h | 7,840 | 7,840 | 7,840 |
| 11 | 3.4 | Определение необходимого оборудования |  | 2.5d | 2018-07-23 A | 2018-07-25 A | 10 | 100% |  | 2018-07-23 | 2018-07-25 | 2.5d |  | Системный администратор; Аналитик | 40h | 40h | 9,600 | 9,600 | 9,600 |
| 12 | 3.5 | Оценка сроков реализации |  | 3d | 2018-07-25 A | 2018-07-30 A | 11 | 100% |  | 2018-07-25 | 2018-07-30 | 3d |  | Аналитик | 24h | 24h | 5,280 | 5,280 | 5,280 |
| 13 | 3.6 | Разработка программы реализации услуги завершено | milestone | 0d | 2018-07-30 A | 2018-07-30 A | 12 | 100% |  | 2018-07-30 | 2018-07-30 | 0d |  | Руководитель проекта Касьянов К.С. |  |  |  |  |  |
| 14 | 4 | **Составление плана проекта** |  | 8.5d | 2018-07-25 A | 2018-08-06 A |  | 100% |  | 2018-07-25 | 2018-08-06 | 8.5d |  |  | 144h | 144h | 36,080 | 36,080 | 36,080 |
| 15 | 4.1 | Определение задач, сроков и ресурсы |  | 3d | 2018-07-25 A | 2018-07-30 A | 11 | 100% |  | 2018-07-25 | 2018-07-30 | 3d |  | Руководитель проекта Касьянов К.С.; Web-программист | 48h | 48h | 12,480 | 12,480 | 12,480 |
| 16 | 4.2 | Оценка финансовых затрат |  | 3d | 2018-07-30 A | 2018-08-02 A | 15 | 100% |  | 2018-07-30 | 2018-08-02 | 3d |  | Аналитик | 24h | 24h | 5,280 | 5,280 | 5,280 |
| 17 | 4.3 | Учет рисков и оптимизация |  | 3.5d | 2018-07-30 A | 2018-08-02 A | 15 | 100% |  | 2018-07-30 | 2018-08-02 | 3.5d |  | Web-аналитик; Руководитель проекта Касьянов К.С. | 56h | 56h | 14,000 | 14,000 | 14,000 |
| 18 | 4.4 | Утверждение проекта и бюджета |  | 2d | 2018-08-03 A | 2018-08-06 A | 17 | 100% |  | 2018-08-03 | 2018-08-06 | 2d |  | Руководитель проекта Касьянов К.С. | 16h | 16h | 4,320 | 4,320 | 4,320 |
| 19 | 4.5 | Составление плана проекта завершено | milestone | 0d | 2018-08-06 A | 2018-08-06 A | 18 | 100% |  | 2018-08-06 | 2018-08-06 | 0d |  | Руководитель проекта Касьянов К.С. |  |  |  |  |  |
| 20 | 5 | **Реализация виртуального хостинга сайтов** |  | 56.5d | 2018-08-07 A | 2018-10-24 |  | 83% | 9.7d | 2018-08-07 | 2018-10-24 | 56.5d | 2.5d |  | 928h | 780h | 1,160,400 | 1,160,400 | 1,095,640 |
| 21 | 5.1 | Закупка интернет-оборудования |  | 10d | 2018-08-07 A | 2018-08-27 | 19 | 99% | 0d | 2018-08-07 | 2018-08-27 | 10d | 44d | Руководитель проекта Касьянов К.С.; Оборудование; Командировочные [0.1%]; Аналитик | 160h | 160h | 567,200 | 567,200 | 539,200 |
| 22 | 5.2 | Подбор и закупка ПО |  | 10d | 2018-08-07 A | 2018-08-20 A | 19 | 100% |  | 2018-08-07 | 2018-08-20 | 10d |  | Системный администратор; Программное обеспечение | 80h | 80h | 420,800 | 420,800 | 420,800 |
| 23 | 5.3 | Установка интернет-оборудования |  | 3d | 2018-08-28 A | 2018-08-30 A | 21 | 100% |  | 2018-08-28 | 2018-08-30 | 3d |  | Системный администратор; Web-программист [50%] | 36h | 36h | 9,240 | 9,240 | 9,240 |
| 24 | 5.4 | Настройка интернет-оборудования |  | 8d | 2018-08-31 A | 2018-09-11 A | 23 | 100% |  | 2018-08-31 | 2018-09-11 | 8d |  | Системный администратор; Web-программист [50%] | 96h | 96h | 24,640 | 24,640 | 24,640 |
| 25 | 5.5 | Установка и настройка ПО |  | 5d | 2018-09-12 A | 2018-09-18 A | 22, 24 | 100% |  | 2018-09-12 | 2018-09-18 | 5d |  | Системный администратор; Web-программист | 80h | 80h | 20,400 | 20,400 | 20,400 |
| 26 | 5.6 | Комуникация с высшим Интернет-провайдером |  | 4d | 2018-09-19 A | 2018-09-24 A | 25 | 100% |  | 2018-09-19 | 2018-09-24 | 4d |  | Руководитель проекта Касьянов К.С.; Аналитик [50%] | 48h | 48h | 12,160 | 12,160 | 12,160 |
| 27 | 5.7 | Настройка зоны IP адресов |  | 4d | 2018-09-25 A | 2018-09-28 A | 25, 26 | 100% |  | 2018-09-25 | 2018-09-28 | 4d |  | Web-программист | 32h | 32h | 8,000 | 8,000 | 8,000 |
| 28 | 5.8 | Настройка зоны доменов |  | 4d | 2018-09-25 A | 2018-09-28 A | 25, 26 | 100% |  | 2018-09-25 | 2018-09-28 | 4d |  | Системный администратор; Руководитель проекта Касьянов К.С. [50%] | 48h | 48h | 12,640 | 12,640 | 12,640 |
| 29 | 5.9 | Настройка DNS сервера |  | 4d | 2018-10-01 A | 2018-10-04 A | 27, 28 | 100% |  | 2018-10-01 | 2018-10-04 | 4d |  | Системный администратор; Аналитик [50%] | 40h | 40h | 9,760 | 9,760 | 9,760 |
| 30 | 5.10 | Настройка файлового сервера |  | 4.5d | 2018-10-05 A | 2018-10-11 A | 29 | 100% |  | 2018-10-05 | 2018-10-11 | 4.5d |  | Системный администратор; Web-аналитик | 72h | 72h | 17,640 | 17,640 | 17,640 |
| 31 | 5.11 | Настройка почтового сервера |  | 4d | 2018-10-05 A | 2018-10-10 A | 29 | 100% |  | 2018-10-05 | 2018-10-10 | 4d |  | Web-программист | 32h | 32h | 8,000 | 8,000 | 8,000 |
| 32 | 5.12 | Тестирование виртуального хостинга сайтов |  | 9d | 2018-10-11 A | 2018-10-24 | 30, 31 | 17% | 7.5d | 2018-10-11 | 2018-10-24 | 9d | 0d | Web-программист; Системный администратор | 144h | 24h | 36,720 | 36,720 | 6,120 |
| 33 | 5.13 | Разработка ценовой политики |  | 15d | 2018-10-03 A | 2018-10-23 | 26FS+6d | 53% | 7d | 2018-10-03 | 2018-10-23 | 15d | 0.5d | Аналитик [50%] | 60h | 32h | 13,200 | 13,200 | 7,040 |
| 34 | 5.14 | Реализация виртуального хостинга сайтов завершено | milestone | 0d | 2018-10-24 | 2018-10-24 | 32, 33 |  |  | 2018-10-24 | 2018-10-24 | 0d | 0d | Руководитель проекта Касьянов К.С. |  |  |  |  |  |
| 35 | 6 | Анализ результатов и составление отчета |  | 2.5d | 2018-10-24 | 2018-10-26 | 34 |  |  | 2018-10-24 | 2018-10-26 | 2.5d | 0d | Руководитель проекта Касьянов К.С.; Аналитик | 40h |  | 9,800 | 9,800 |  |
| 36 | 7 | Проект завершен | milestone | 0d | 2018-10-26 | 2018-10-26 | 35 |  |  | 2018-10-26 | 2018-10-26 | 0d | 0d | Руководитель проекта Касьянов К.С. |  |  |  |  |  |
